# OASIS Transition Plan 05262022

Schedule from MS Project, 2021-10-01 to 2023-10-02, A marks actual dates.

## Calendars

- Standard: Mon-Fri 08:00-12:00, 13:00-17:00; Sat-Sun off.

## Resources

| Resource |
| --- |
| Chet |
| CM |
| SL |
| MaryBeth |

## Schedule

| ID | WBS | Task | Type | Duration | Start | Finish | Predecessors | Complete | Remaining | Total slack | Constraint | Resources | Work | Text1 |
| --- | --- | --- | --- | --- | --- | --- | --- | --- | --- | --- | --- | --- | --- | --- |
| 1 | 1 | **NIEM Transition** |  | 522d? | 2021-10-01 A | 2023-10-02 |  | 35% | 338.92d? |  |  |  | 32h |  |
| 2 | 1.1 | **Preparation** |  | 262d? | 2021-10-01 A | 2022-10-03 |  | 36% | 167.39d? |  |  |  | 32h |  |
| 3 | 1.1.1 | **Due Diligence** |  | 1d | 2021-10-01 A | 2021-10-01 A |  | 100% |  |  |  |  |  |  |
| 4 | 1.1.1.1 | NBAC/NTAC Endorsement | milestone, manual | 0d | 2021-10-01 A | 2021-10-01 A |  | 100% |  |  |  |  |  |  |
| 5 | 1.1.1.2 | ESC Approval | milestone, manual | 0d | 2021-10-01 A | 2021-10-01 A |  | 100% |  |  |  |  |  |  |
| 6 | 1.1.1.3 | Transition Team Standup | milestone, manual | 0d | 2021-10-01 A | 2021-10-01 A |  | 100% |  |  |  |  |  |  |
| 7 | 1.1.1.4 | Transition Kickoff | milestone, manual | 0d | 2021-10-01 A | 2021-10-01 A |  | 100% |  |  |  |  |  |  |
| 8 | 1.1.1.5 | Setup Battle Rhythm | milestone, manual | 0d | 2021-10-01 A | 2021-10-01 A |  | 100% |  |  |  |  |  |  |
| 9 | 1.1.1.6 | Due Diligence Complete | milestone, manual | 0d | 2021-10-01 A | 2021-10-01 A |  | 100% |  |  |  |  |  |  |
| 10 | 1.1.2 | **Create New Governance** |  | 262d? | 2021-10-01 A | 2022-10-03 |  | 36% | 167.39d? |  |  |  | 32h |  |
| 11 | 1.1.2.1 | Draft Charter | manual | 102d | 2021-10-01 A | 2022-02-21 A |  | 100% |  |  |  |  |  |  |
| 12 | 1.1.2.2 | Charter Approval by ESC |  | 19d | 2022-02-21 A | 2022-03-17 A |  | 100% |  |  |  |  |  |  |
| 13 | 1.1.2.3 | Submit Charter to OASIS |  | 1d | 2022-03-17 A | 2022-03-17 A |  | 100% |  |  |  |  |  |  |
| 14 | 1.1.2.4 | Prepare a list of NIEM assets (website, GitHub repos, mailing lists, etc.) that will transition into the Open Project (NIEM staff) | manual | 1d | 2021-10-01 | 2021-10-01 |  |  |  |  |  | CM | 8h |  |
| 15 | 1.1.2.5 | Review NIEM assets and determine what modifications, if any, are needed to brand them or transition them to the OASIS Open Project | manual | 1d | 2021-10-01 | 2021-10-01 |  |  |  |  |  |  |  |  |
| 16 | 1.1.2.6 | Prepare a list of existing NIEM governance/process documents | manual | 262d | 2021-10-01 A | 2022-10-03 |  | 25% | 196.5d |  |  |  |  |  |
| 17 | 1.1.2.7 | Revise NIEM governance over to OASIS | manual | 1d | 2021-10-01 | 2021-10-01 |  |  |  |  |  |  |  |  |
| 18 | 1.1.2.8 | Determine how to organize/revise existing NIEM governance/process documents over to the Open Project | manual | 1d | 2021-10-01 | 2021-10-01 |  |  |  |  |  |  |  |  |
| 19 | 1.1.2.9 | **Sponsorship** |  | 75d? | 2022-03-18 A | 2022-06-30 | 13 | 5% | 71.07d? |  |  |  |  |  |
| 20 | 1.1.2.9.1 | PGB Sponsors Solicited |  | 75d? | 2022-03-18 A | 2022-06-30 |  | 10% | 67.5d? | 327d | finish no earlier than 2022-06-30 |  |  | Draft email & set a date for 4/19 |
| 21 | 1.1.2.9.2 | Outreach to potential participates, adopters, and sponsors | manual | 67d | 2022-03-30 | 2022-06-30 |  |  |  |  |  |  |  |  |
| 22 | 1.1.2.9.3 | OASIS NIEM Committees Memebership Codified | manual | 1d | 2022-03-18 | 2022-03-18 |  |  |  |  |  |  |  |  |
| 23 | 1.1.2.10 | **Marketing& Development** |  | 262d | 2021-10-01 | 2022-10-03 |  |  |  |  |  |  | 24h |  |
| 24 | 1.1.2.10.1 | Decicated GitHub organization, permissions management, issue tracking | manual | 1d | 2021-10-01 | 2021-10-01 |  |  |  |  |  | Chet | 8h | transfering ownership of our GitHub to OASIS |
| 25 | 1.1.2.10.2 | Comms Plan | manual | 1d | 2021-10-01 | 2021-10-01 |  |  |  |  |  | MaryBeth | 8h |  |
| 26 | 1.1.2.10.3 | Mailing list and group management platform with calendar, roster, balloting | manual | 1d | 2021-10-01 | 2021-10-01 |  |  |  |  |  | SL | 8h | OASIS will own |
| 27 | 1.1.2.10.4 | Exclusive marketing benefits for sponsors | manual | 1d | 2021-10-01 | 2021-10-01 |  |  |  |  |  |  |  |  |
| 28 | 1.1.2.10.5 | Establish confluence space | manual | 1d? | 2021-10-01 | 2021-10-01 |  |  |  |  |  |  |  |  |
| 29 | 1.1.2.10.6 | Awareness Campaign | manual | 1d | 2021-10-01 | 2021-10-01 |  |  |  |  |  |  |  |  |
| 30 | 1.1.2.10.7 | Independent branding | manual | 1d | 2021-10-01 | 2021-10-01 |  |  |  |  |  |  |  |  |
| 31 | 1.1.2.10.8 | Development Domain Stewardship Transition Workshops | manual | 1d | 2021-10-01 | 2021-10-01 |  |  |  |  |  |  |  |  |
| 32 | 1.1.2.10.9 | Governance Complete | manual | 1d | 2021-10-01 | 2021-10-01 |  |  |  |  |  |  |  |  |
| 33 | 1.2 | Preparation Complete | manual | 1d | 2021-10-01 | 2021-10-01 |  |  |  |  |  |  |  |  |

Notes:
- 14: Chet to create Pro/Con list of taking over existing Github etc. vs creating new
- 18: 5/26 GTRI Mark D talking with OASIS Chet on formatting and distribution processes
- 28: 5/26 Draft space created. Aubrey establishing organization and uploading materials.

| ID | WBS | Task | Type | Duration | Start | Finish |
| --- | --- | --- | --- | --- | --- | --- |
| 34 | 1.3 | **Formal Transition to OASIS** |  | 261d | 2022-10-03 | 2023-10-02 |
| 35 | 1.3.1 | **Formal Transition** |  | 261d | 2022-10-03 | 2023-10-02 |
| 36 | 1.3.1.1 | Set up formal PGB | manual | 1d | 2022-10-03 | 2022-10-03 |
| 37 | 1.3.1.2 | Mentor NIEM OASIS PGB | manual | 1d | 2022-10-03 | 2022-10-03 |
| 38 | 1.3.1.3 | Selected Technology Capital Transferred (MEP tool, NIEM model, etc) | manual | 1d | 2022-10-03 | 2022-10-03 |
| 39 | 1.3.1.4 | Intellectual Capital Transferred (goverance docs, github docs, etc) | manual | 1d | 2022-10-03 | 2022-10-03 |
| 40 | 1.3.1.5 | Host Domain Stewardship Transition Workshops | manual | 1d | 2022-10-03 | 2022-10-03 |
| 41 | 1.3.1.6 | Final ESC Turnover to PGB | manual | 1d | 2022-10-03 | 2022-10-03 |
| 42 | 1.3.1.7 | Formal Trasition Complete | manual | 1d | 2022-10-03 | 2022-10-03 |
| 43 | 1.4 | **NIEM NMO transition to OASIS** |  | 261d | 2022-10-03 | 2023-10-02 |
| 44 | 1.4.1 | Enterprise Tools | manual | 1d | 2022-10-03 | 2022-10-03 |
| 45 | 1.4.2 | Training | manual | 1d | 2022-10-03 | 2022-10-03 |
| 46 | 1.4.3 | Annual Model Update | manual | 1d | 2022-10-03 | 2022-10-03 |
| 47 | 1.4.4 | NIEM Management Office | manual | 1d | 2022-10-03 | 2022-10-03 |
| 48 | 1.4.5 | Meeting Management | manual | 1d | 2022-10-03 | 2022-10-03 |
| 49 | 1.4.6 | NIEM.gov website | manual | 1d | 2022-10-03 | 2022-10-03 |
| 50 | 1.4.7 | Open IEPD Repository | manual | 1d | 2022-10-03 | 2022-10-03 |
| 51 | 1.5 | **NIEM Transition to MilOps** |  | 1d | 2021-10-01 | 2021-10-01 |
| 52 | 1.5.1 | Restricted (CUI) Respository | manual | 1d | 2021-10-01 | 2021-10-01 |

Notes:
- 39: 5/26 Chet to setup meeting with Lawyer Jamie to discuss options
- 44: 5/26 chet to follow up with Scott regarding request to potentially host the MEP tool.
